# SOW5

Schedule from MS Project, 2011-05-20 to 2011-07-04, status date 2011-05-20, A marks actual dates.
Grizli777

## Calendars

- Standard: Mon-Fri 08:00-12:00, 13:00-17:00; Sat-Sun off.

## Resources

| Resource |
| --- |
| VladL |
| ArturR |
| VladS |
| EliaK |
| MichaelL |
| VadimS |

## Schedule

| ID | WBS | Task | Type | Duration | Start | Finish | Predecessors | Complete | Remaining | Total slack | Free slack | Resources | Work |
| --- | --- | --- | --- | --- | --- | --- | --- | --- | --- | --- | --- | --- | --- |
| 1 | 1 | **CRM UI** |  | 32d? | 2011-05-20 A | 2011-07-04 |  | 1% | 31.75d? | 0d |  |  | 728h |
| 2 | 1.1 | **Business Domain (Lister, Search Criteria, Viewer, Editor)** |  | 32d? | 2011-05-20 | 2011-07-04 |  |  |  | -4d | 0d |  | 256h |
| 3 | 1.1.1 | Building |  | 2d? | 2011-05-26 | 2011-05-27 |  |  |  | 26d |  | VladL | 16h |
| 4 | 1.1.2 | Roof |  | 2d? | 2011-05-30 | 2011-05-31 |  |  |  | 24d |  | VladL | 16h |
| 5 | 1.1.3 | RoofSegment |  | 2d? | 2011-06-01 | 2011-06-02 |  |  |  | 22d |  | VladL | 16h |
| 6 | 1.1.4 | Parking |  | 2d? | 2011-06-03 | 2011-06-06 |  |  |  | 20d |  | VladL | 16h |
| 7 | 1.1.5 | Parking Spot |  | 2d? | 2011-06-07 | 2011-06-08 |  |  |  | 18d |  | VladL | 16h |
| 8 | 1.1.6 | Locker Area |  | 2d? | 2011-06-09 | 2011-06-10 |  |  |  | 16d |  | VladL | 16h |
| 9 | 1.1.7 | Locker |  | 2d? | 2011-06-13 | 2011-06-14 |  |  |  | 14d |  | VladL | 16h |
| 10 | 1.1.8 | Pool |  | 2d? | 2011-06-15 | 2011-06-16 |  |  |  | 12d |  | VladL | 16h |
| 11 | 1.1.9 | Boiler | inactive | 2d? | 2011-05-20 | 2011-05-23 |  |  |  | 30d |  | VladL | 16h |
| 12 | 1.1.10 | Unit |  | 2d? | 2011-06-17 | 2011-06-20 |  |  |  | 10d |  | VladL | 16h |
| 13 | 1.1.11 | Tenant |  | 2d? | 2011-06-21 | 2011-06-22 |  |  |  | 8d |  | VladL | 16h |
| 14 | 1.1.12 | Inquiry |  | 2d? | 2011-06-23 | 2011-06-24 |  |  |  | 6d |  | VladL | 16h |
| 15 | 1.1.13 | Lease |  | 2d? | 2011-05-20 | 2011-05-23 |  |  |  | -4d | 0d | VladL | 16h |
| 16 | 1.1.14 | Application |  | 2d? | 2011-05-24 | 2011-05-25 | 15 |  |  | -4d | 0d | VladL | 16h |
| 17 | 1.1.15 | Employee |  | 2d? | 2011-06-27 | 2011-06-28 |  |  |  | 4d |  | VladL | 16h |
| 18 | 1.1.16 | Vendor |  | 2d? | 2011-06-29 | 2011-06-30 |  |  |  | 2d |  | VladL | 16h |
| 19 | 1.1.17 | Contract |  | 2d? | 2011-07-01 | 2011-07-04 |  |  |  | 0d |  | VladL | 16h |
| 20 | 1.2 | **Policies** |  | 2d | 2011-05-20 | 2011-05-23 |  |  |  |  |  |  | 248h |
| 21 | 1.2.1 | Project Plan for Policies |  | 1d | 2011-05-20 | 2011-05-20 |  |  |  | 1d |  | ArturR | 8h |
| 22 | 1.2.2 | Policy Framework Design |  | 14d | 2011-05-23 | 2011-06-09 |  |  |  | -13d | 0d | ArturR | 112h |
| 23 | 1.2.3 | Policy related framework - navigate, list, search, duplicate, edit | manual | 5d | 2011-05-20 | 2011-05-26 |  |  |  |  |  |  |  |
| 24 | 1.2.4 | **Lease Application** |  | 1d? | 2011-05-20 | 2011-05-20 |  |  |  | 1d |  |  |  |
| 25 | 1.2.4.1 | Document Req Before Background Check |  | 1d? | 2011-05-20 | 2011-05-20 |  |  |  | 1d |  |  |  |
| 26 | 1.2.4.2 | Document Req After Background Check |  | 1d? | 2011-05-20 | 2011-05-20 |  |  |  | 1d |  |  |  |
| 27 | 1.2.4.3 | Employment Req |  | 1d? | 2011-05-20 | 2011-05-20 |  |  |  | 1d |  |  |  |
| 28 | 1.2.4.4 | Residency Req |  | 1d? | 2011-05-20 | 2011-05-20 |  |  |  | 1d |  |  |  |
| 29 | 1.2.4.5 | Garantor Req |  | 1d? | 2011-05-20 | 2011-05-20 |  |  |  | 1d |  |  |  |
| 30 | 1.2.4.6 | <New Task> |  | 1d? | 2011-05-20 | 2011-05-20 |  |  |  | 1d |  |  |  |
| 31 | 1.2.4.7 | <New Task> |  | 1d? | 2011-05-20 | 2011-05-20 |  |  |  | 1d |  |  |  |
| 32 | 1.2.5 | Background Check Requirements |  | 2d | 2011-06-14 | 2011-06-15 |  |  |  | -17d | 0d | ArturR | 16h |
| 33 | 1.2.6 | Deposit Calculation Formula |  | 2d | 2011-06-16 | 2011-06-17 |  |  |  | -19d | 0d | ArturR | 16h |
| 34 | 1.2.7 | Legal/Collections |  | 2d | 2011-06-20 | 2011-06-21 |  |  |  | -21d | 0d | ArturR | 16h |
| 35 | 1.2.8 | Kids |  | 2d | 2011-06-22 | 2011-06-23 |  |  |  | -23d | 0d | ArturR | 16h |
| 36 | 1.2.9 | Late Fees |  | 2d | 2011-06-24 | 2011-06-27 |  |  |  | -25d | 0d | ArturR | 16h |
| 37 | 1.2.10 | Usage Fees |  | 2d | 2011-06-28 | 2011-06-29 |  |  |  | -27d | 0d | ArturR | 16h |
| 38 | 1.2.11 | Prorate |  | 2d | 2011-06-30 | 2011-07-01 |  |  |  | -29d | 0d | ArturR | 16h |
| 39 | 1.2.12 | Pets |  | 2d | 2011-06-10 | 2011-06-13 |  |  |  | -15d | 0d | ArturR | 16h |

Notes:
- 11: Out for Scope for Betta

| ID | WBS | Task | Type | Duration | Start | Finish | Predecessors | Complete | Total slack | Free slack | Resources | Work |
| --- | --- | --- | --- | --- | --- | --- | --- | --- | --- | --- | --- | --- |
| 40 | 1.3 | **Business Processes** |  | 2d | 2011-05-20 | 2011-05-23 |  |  |  |  |  | 224h |
| 41 | 1.3.1 | Application Approval |  | 2d | 2011-05-26 | 2011-05-27 | 16 |  | -4d | 0d | VladS; MichaelL | 32h |
| 42 | 1.3.2 | Move In |  | 3d | 2011-05-20 | 2011-05-24 |  |  | -1d | 0d | VladS; MichaelL | 32h |
| 43 | 1.3.3 | Notice |  | 3d | 2011-05-24 | 2011-05-30 |  |  | -5d | 0d | VladS; MichaelL | 32h |
| 44 | 1.3.4 | Move Out |  | 3d | 2011-05-30 | 2011-06-01 |  |  | -7d | 0d | VladS; MichaelL | 32h |
| 45 | 1.3.5 | Off Market Statuses |  | 3d | 2011-06-01 | 2011-06-03 |  |  | -9d | 0d | VladS; MichaelL | 32h |
| 46 | 1.3.6 | Parking/Storage Assignment |  | 3d | 2011-06-03 | 2011-06-07 |  |  | -11d | 0d | MichaelL; VladS | 32h |
| 47 | 1.3.7 | Elevator Booking |  | 3d | 2011-06-07 | 2011-06-09 |  |  | -13d | 0d | MichaelL; VladS | 32h |
| 48 | 1.3.8 | Inquiry Management |  | 2d | 2011-05-20 | 2011-05-23 |  |  | 0d |  |  |  |
| 49 | 1.3.9 | Lease Application Management |  | 2d | 2011-05-20 | 2011-05-23 |  |  | 0d |  |  |  |
| 50 | 1.3.10 | Vacant Unit Scoping |  | 2d | 2011-05-20 | 2011-05-23 |  |  | 0d |  |  |  |
| 51 | 1.4 | **Profile** |  | 1d | 2011-05-20 | 2011-05-20 |  |  |  |  |  |  |
| 52 | 1.4.1 | Change Email, Password |  | 1d | 2011-05-20 | 2011-05-20 |  |  | 0d |  |  |  |
| 53 | 1.5 | **Preferences** |  | 1d | 2011-05-20 | 2011-05-20 |  |  |  |  |  |  |
| 54 | 1.5.1 | Notifications settings |  | 1d | 2011-05-20 | 2011-05-20 |  |  | 0d |  |  |  |
| 55 | 1.6 | **PM Settings** |  | 1d | 2011-05-20 | 2011-05-20 |  |  |  |  |  |  |
| 56 | 1.6.1 | Details |  | 1d | 2011-05-20 | 2011-05-20 |  |  | 0d |  |  |  |
| 57 | 1.6.2 | Policy Management |  | 1d | 2011-05-20 | 2011-05-20 |  |  | 0d |  |  |  |
| 58 | 1.6.3 | **CMS for Portal** |  | 1d | 2011-05-20 | 2011-05-20 |  |  |  |  |  |  |
| 59 | 1.6.3.1 | General Tenant Portal Properties |  | 1d | 2011-05-20 | 2011-05-20 |  |  | 0d |  |  |  |
| 60 | 1.6.3.2 | Site Map Tree with Editing Capabilities |  | 1d | 2011-05-20 | 2011-05-20 |  |  | 0d |  |  |  |
| 61 | 1.6.3.3 | Editor to define Static Pages |  | 1d | 2011-05-20 | 2011-05-20 |  |  | 0d |  |  |  |
| 62 | 1.6.3.4 | Rich Text Editor component with image upload and filters |  | 1d | 2011-05-20 | 2011-05-20 |  |  | 0d |  |  |  |
| 63 | 1.6.3.5 | Style/Skin Editor |  | 1d | 2011-05-20 | 2011-05-20 |  |  | 0d |  |  |  |
| 64 | 1.7 | Alerts/Notifications | manual | 2d | 2011-05-20 | 2011-05-23 |  |  |  |  |  |  |
| 65 | 1.8 | Mails |  | 1d? | 2011-05-20 A | 2011-05-20 A |  | 100% |  |  |  |  |

Notes:
- 41: http://propertyvista.jira.com/wiki/display/VISTA/PT+Approval+Process

| ID | WBS | Task | Duration | Start | Finish | Total slack | Free slack | Resources | Work |
| --- | --- | --- | --- | --- | --- | --- | --- | --- | --- |
| 66 | 1.9 | **UI Framework Components and Functionality** | 1d | 2011-05-20 | 2011-05-20 |  |  |  |  |
| 67 | 1.9.1 | Recent Activities | 1d | 2011-05-20 | 2011-05-20 | 0d |  |  |  |
| 68 | 1.9.2 | Favorites | 1d | 2011-05-20 | 2011-05-20 | 0d |  |  |  |
| 69 | 1.9.3 | Lister Header - sorting, column selector | 1d | 2011-05-20 | 2011-05-20 | 0d |  |  |  |
| 70 | 1.9.4 | Search Filters | 1d | 2011-05-20 | 2011-05-20 | 0d |  |  |  |
| 71 | 1.9.5 | Text Search | 1d | 2011-05-20 | 2011-05-20 | 0d |  |  |  |
| 72 | 1.10 | **Dashboard/Report** | 2d | 2011-05-20 | 2011-05-23 |  |  |  |  |
| 73 | 1.10.1 | **Gadgets** | 1d | 2011-05-20 | 2011-05-20 |  |  |  |  |
| 74 | 1.10.1.1 | Lister | 1d | 2011-05-20 | 2011-05-20 | 0d |  |  |  |
| 75 | 1.10.1.2 | Pie Chart | 1d | 2011-05-20 | 2011-05-20 | 0d |  |  |  |
| 76 | 1.10.1.3 | Bar Chart | 1d | 2011-05-20 | 2011-05-20 | 0d |  |  |  |
| 77 | 1.10.1.4 | Line Chart | 1d | 2011-05-20 | 2011-05-20 | 0d |  |  |  |
| 78 | 1.10.1.5 | Notifications Gadget | 1d | 2011-05-20 | 2011-05-20 | 0d |  |  |  |
| 79 | 1.10.1.6 | Alerts Gadget | 1d | 2011-05-20 | 2011-05-20 | 0d |  |  |  |
| 80 | 1.10.2 | Dashboard Management | 1d | 2011-05-20 | 2011-05-20 | 1d |  |  |  |
| 81 | 1.10.3 | Report Management | 1d | 2011-05-20 | 2011-05-20 | 1d |  |  |  |
| 82 | 2 | **Tenant Portal** | 1d? | 2011-05-20 | 2011-05-20 |  |  |  | 48h |
| 83 | 2.1 | **General Site Design** | 1d | 2011-05-20 | 2011-05-20 |  |  |  | 48h |
| 84 | 2.1.1 | Site Map | 1d | 2011-05-20 | 2011-05-20 | 0d |  | VadimS | 8h |
| 85 | 2.1.2 | Styles | 1d | 2011-05-23 | 2011-05-23 | -1d | 0d | VadimS | 8h |
| 86 | 2.1.3 | Maps | 1d | 2011-05-24 | 2011-05-24 | -2d | 0d | VadimS | 8h |
| 87 | 2.1.4 | Picture Views | 1d | 2011-05-25 | 2011-05-25 | -3d | 0d | VadimS | 8h |
| 88 | 2.1.5 | Site Layout | 1d | 2011-05-26 | 2011-05-26 | -4d | 0d | VadimS | 8h |
| 89 | 2.1.6 | Province Selection Map | 1d | 2011-05-20 | 2011-05-20 | 0d |  | MichaelL | 8h |

| ID | WBS | Task | Type | Duration | Start | Finish | Total slack | Free slack |
| --- | --- | --- | --- | --- | --- | --- | --- | --- |
| 90 | 2.2 | **Functionality** |  | 1d? | 2011-05-20 | 2011-05-20 |  |  |
| 91 | 2.2.1 | Apartment Lister |  | 1d | 2011-05-20 | 2011-05-20 | 0d |  |
| 92 | 2.2.2 | Apartment Details |  | 1d | 2011-05-20 | 2011-05-20 | 0d |  |
| 93 | 2.2.3 | Unit Details |  | 1d | 2011-05-20 | 2011-05-20 | 0d |  |
| 94 | 2.2.4 | Apply for Lease |  | 1d | 2011-05-20 | 2011-05-20 | 0d |  |
| 95 | 2.2.5 | Inquary |  | 1d | 2011-05-20 | 2011-05-20 | 0d |  |
| 96 | 2.2.6 | Waiting List |  | 1d | 2011-05-20 | 2011-05-20 | 0d |  |
| 97 | 2.2.7 | **Current application status, progress, approval process** |  | 1d? | 2011-05-20 | 2011-05-20 |  |  |
| 98 | 2.2.7.1 | Status page |  | 1d | 2011-05-20 | 2011-05-20 | 0d |  |
| 99 | 2.2.7.2 | Show and sign the lease |  | 2d? | 2011-05-20 | 2011-05-23 | -1d | 0d |
| 100 | 2.2.7.3 | Confirm PAP(Preauthorised Payment Plan) method |  | 2d? | 2011-05-20 | 2011-05-23 | -1d | 0d |
| 101 | 2.2.7.4 | Schedule move-in date |  | 2d? | 2011-05-20 | 2011-05-23 | -1d | 0d |
| 102 | 2.2.7.5 | Confirming Tenant Insurance and Hydro |  | 2d? | 2011-05-20 | 2011-05-23 | -1d | 0d |
| 103 | 2.2.7.6 | UPSELL page for PV to make profit through alliances |  | 2d? | 2011-05-20 | 2011-05-23 | -1d | 0d |
| 104 | 2.2.8 | Maintanance call |  | 2d | 2011-05-20 | 2011-05-23 | -1d | 0d |
| 105 | 2.2.9 | **Payments** |  | 1d? | 2011-05-20 | 2011-05-20 |  |  |
| 106 | 2.2.9.1 | Payment method editor |  | 1d? | 2011-05-20 | 2011-05-20 | 0d |  |
| 107 | 2.2.9.2 | Payment history |  | 1d? | 2011-05-20 | 2011-05-20 | 0d |  |
| 108 | 2.2.9.3 | Current/Outstanding charges |  | 1d? | 2011-05-20 | 2011-05-20 | 0d |  |
| 109 | 2.2.10 | My Account | manual | 1d? | 2011-05-20 | 2011-05-20 |  |  |
| 110 | 2.2.11 | Notice etc... | manual | 1d? | 2011-05-20 | 2011-05-20 |  |  |
| 111 | 2.2.12 | Static Content Presentation |  | 1d | 2011-05-20 | 2011-05-20 | 0d |  |
| 112 | 3 | **PT Wizard** |  | 2d? | 2011-05-20 | 2011-05-23 |  |  |
| 113 | 3.1 | Mail Notifications and Invitations |  | 1d | 2011-05-20 | 2011-05-20 | 1d |  |
| 114 | 3.2 | Co-Signer Flow |  | 1d | 2011-05-20 | 2011-05-20 | 1d |  |
| 115 | 3.3 | Support IE7 |  | 1d? | 2011-05-20 | 2011-05-20 | 1d |  |

Notes:
- 97: http://propertyvista.jira.com/wiki/display/VISTA/PT+Approval+Process
- 103: Cable / Internet / Phone / Cell Phone / Tenant Insurance / Car Insurance

| ID | WBS | Task | Type | Duration | Start | Finish | Total slack |
| --- | --- | --- | --- | --- | --- | --- | --- |
| 116 | 4 | **Server** |  | 1d? | 2011-05-20 | 2011-05-20 |  |
| 117 | 4.1 | CRUD Functionality Services |  | 1d? | 2011-05-20 | 2011-05-20 | 0d |
| 118 | 4.2 | DNS selector for PM |  | 1d? | 2011-05-20 | 2011-05-20 | 0d |
| 119 | 4.3 | Eqifax |  | 1d? | 2011-05-20 | 2011-05-20 | 0d |
| 120 | 4.4 | Vista Corporate Site for PM Sign-up, Account configuration, Corporate-wise Policy Definition | inactive, manual | 1d? | 2011-05-20 | 2011-05-20 |  |
